# Cronograma de trabajo

Schedule from MS Project, 2014-08-04 to 2014-11-28, costs in $.
Toshiba

## Calendars

- Estándar: Mon-Sat 08:00-12:00, 13:00-17:00; Sun off.

## Resources

| Resource | Group | Unit | Rate |
| --- | --- | --- | --- |
| Albañil | Estructura Ocupacional D2 |  | 3.05 |
| Pintor | Estructura Ocupacional D2 |  | 3.05 |
| Fierrero | Estructura Ocupacional D2 |  | 3.05 |
| Carpintero | Estructura Ocupacional D2 |  | 3.05 |
| Encofrador | Estructura Ocupacional D2 |  | 3.05 |
| Maestro mayor en ejecución de obras civiles | Estructura Ocupacional C1 |  | 3.38 |
| Topógrafo 2: título exper. mayor a 5 años (Estr. Oc. C1) | Topografía |  | 3.38 |
| Plomero | Estructura Ocupacional D2 |  | 3.05 |
| Electricista | Estructura Ocupacional D2 |  | 3.05 |
| Cadenero | Estructura Ocupacional D2 |  | 3.05 |
| Equipo de topografía | Herramienta menor / Equipo Liviano para obras civiles |  | 10 |
| Módulo andamio metálico h= 1.5 m | Andamios / Encofrados |  | 0.1 |
| Multímetro | Herramienta menor / Equipo Liviano para obras eléctricas y telefónicas |  | 1.2 |
| Herramientas varias | Herramienta menor / Equipo Liviano para obras civiles |  | 0.3 |
| Concretera un saco | Equipo motorizado para obras civiles |  | 3 |
| Vibrador | Equipo motorizado para obras civiles |  | 2.5 |
| Cortadora | Herramienta menor / Equipo Liviano para obras civiles |  | 0.72 |
| Acero en varillas | Acero en barras | kg | 1.2 |
| Pingos de eucalipto | Madera aserrada, cepillada y/o escuadrada (preparada) | m. | 0.8 |
| Tabla ordinaria de monte 28 x 2.5 x 300 cm | Madera aserrada, cepillada y/o escuadrada (preparada) | u | 2.5 |
| Tiras de eucalipto 4 x 5 x 300 cm | Madera aserrada, cepillada y/o escuadrada (preparada) | u | 1.07 |
| Tiras de eucalipto 2 x 2 x 300 cm | Madera aserrada, cepillada y/o escuadrada (preparada) | u | 0.86 |
| Pintura anticorrosiva + diluyente | Pinturas al látex | gl | 11.78 |
| Suelda | Varios Generales | kg | 2.46 |
| Ladrillo panelón 28 x 14 x 9 cm | Ladrillos comunes de arcilla - Azuay | u | 0.22 |
| Arena puesta en obra | Materiales pétreos - Azuay | m3 | 18 |
| Grava puesta en obra | Materiales pétreos - Azuay | m3 | 15 |
| Piedra puesta en obra | Materiales pétreos - Azuay | m3 | 14.75 |
| Clavos | Varios Generales | kg | 1.91 |
| Alambre de amarre No. 18 negro recocido | Alambres de metal | kg | 2.05 |
| Varios | Varios Generales | Global | 1.6 |
| Agua | Varios Generales | lt | 0.01 |
| Viga electrosoldada V1 | Perfiles estructurales de acero | u | 14 |
| Lija | Varios Generales | pliego | 0.62 |
| Fondo yeso cola | Pinturas al látex | gl | 3.8 |
| Albalux | Cementos varios y similares | kg | 0.15 |
| Aditivo plastificante | Productos químicos para hormigón y morteros | lt | 0.85 |
| Codo PVC 110 mm x 90 grados desagüe | Tubos y accesorios de PVC - para desagüe | u | 2.44 |
| Bloque pomez de 40 × 20 × 15 cm | Bloques de hormigón - Azuay | u | 0.6 |
| Cal apagada | Materiales pétreos - Azuay | Kg | 0.16 |
| Peón | Estructura Ocupacional E2 |  | 3.01 |
| Cemento Portland Tipo I | Cemento Portland - Tipo I - Sacos | saco 50 kg | 6.8 |
| Cerámico nacional de 30x30 | Azulejos y cerámicos vitrificados | m2 | 8.79 |
| Emporado para pisos y paredes | Cementos varios y similares | Kg | 1 |
| Pintura de caucho | Pinturas al látex | gal | 18.1 |
| Soldadora portatil | Herramienta menor / Equipo Liviano para obras civiles |  | 0.5 |
| Angulo (1 1/2" x 1/8") | Perfiles estructurales de acero | m. | 1.6 |
| Andamios | Varios Generales | u | 0.4 |
| Centro de carga 1F 06 polos | Tableros de control, distribución y Acc. | u | 28.79 |
| Tiras de eucalipto 4 x 5 x 300 cm. | Madera aserrada, cepillada y/o escuadrada (preparada) | u | 1.07 |
| Teflón | Instalaciones sanitarias (vivienda) | rollo | 0.57 |
| Kalipega | Varios Generales | gl | 49.11 |
| Yee de PVC de 50mm para desagüe | Instalaciones sanitarias (vivienda) | u | 1.49 |
| Yee de PVC de 110mm para desagüe | Instalaciones sanitarias (vivienda) | u | 4.42 |
| Cubierta de galvalume prepintado e=0.40mm | Perfiles estructurales de acero | m2 | 5.11 |
| Compresor 2 HP | Herramienta menor / Equipo Liviano para obras civiles |  | 1 |
| Viga electrosoldada V5 | Acero en barras | u | 22.37 |
| Tubería PVC desagüe d=50 mm Tipo B | Tubos y accesorios de PVC - para alcantarillado | m. | 1.96 |
| Codo PVC desagüe 50 mm 90° | Tubos y accesorios de PVC - para alcantarillado | u | 0.95 |
| Unión EMT de 1/2" | Varios para obras eléctricas, electrónicas y de teléfonos | u | 0.33 |
| Cajetin rectangular profundo | Varios para obras eléctricas, electrónicas y de teléfonos | u | 0.57 |
| Breaker 1F 10-50 A enchufable | Instalaciones eléctricas (vivienda) | u | 4.89 |
| Alambre galvanizado #18 | MATERIALES | kg | 2.3 |
| Técnico electromecánico de construcción | Estructura Ocupacional D2 |  | 3.05 |
| Maestro electrico/liniero/subestación | Estructura Ocupacional C1 |  | 3.38 |
| Caballete para galvalume e=3mm | Perfiles estructurales de acero | u | 3.13 |
| Herramientas manuales | Herramienta menor / Equipo Liviano para obras civiles |  | 0.3 |
| Tubería PVC desague tipo B 110 mm | MATERIALES | m. | 4.42 |
| Herramienta manual | Herramienta menor / Equipo Liviano para obras civiles |  | 0.3 |
| Bloque de 10x20x40 | Bloques de hormigón - Azuay | u | 0.51 |
| Puerta de madera de 0.90x2.10 incluye marco cerradura y accesorios de instalación | Varios para obras arquitectónicas / restauración | u | 51 |
| Ventana de hierro con vidrio de 3mm incluye protección y accesorios de instalación | Varios Generales | m2 | 35 |
| Soldadora | Herramienta menor / Equipo Liviano para obras civiles |  | 3 |
| Suelda | Varios Generales | kg | 2.46 |
| Inodoro blanco nacional | Piezas sanitarias porcelana vitrificada - inodoros | u | 37.12 |
| Tubo de Abasto | Grifería y similares | u | 3.98 |
| Teflon | Varios Generales | u | 0.57 |
| Griferia | Grifería y similares | u | 10.08 |
| Sifon y desague | Grifería y similares | u | 6.62 |
| Uñetas de Sujecion | Varios Generales | jgo | 1.84 |
| Tornillo y taco fisher | Varios Generales | u | 0.06 |
| Lavado Blanco | Piezas sanitarias porcelana vitrificada - lavamanos | u | 11.5 |
| Llave cuello de cisne | Varios Generales | u | 12 |
| Fregadero de 1p 60x40 blanco | Piezas sanitarias porcelana vitrificada - lavamanos | u | 14.5 |
| Rejilla de piso de 2" | Varios Generales | u | 6.52 |
| Tomacorrientes dobles | Varios para obras eléctricas, electrónicas y de teléfonos | u | 2.74 |
| Manguera Electrica | Varios para obras eléctricas, electrónicas y de teléfonos | ml | 0.28 |
| Cable Electrico #12 | Varios para obras eléctricas, electrónicas y de teléfonos | ml | 0.5 |
| Cajetin Rectangular | Varios para obras eléctricas, electrónicas y de teléfonos | u | 0.35 |
| Taipes | Varios Generales | u | 0.34 |
| Malla electrosoldada R 106 | Mallas metálicas para cerramiento | m2 | 2.31 |
| Puerta metalica de 0.90x2.10m incluye accesorios de instalación | Varios Generales | u | 90 |
| Agua en obra (Incluye instalaciones provisionales) | Varios Generales | litro | 0.05 |
| Sierra Circular | Herramienta menor / Equipo Liviano para obras civiles |  | 0.74 |
| Clavo 1 1/2 x 16 (25kg/caja) | Varios Generales | kg | 2.3 |
| Sika Cola Blanca | Varios Generales | Plástico 4 kg | 10.5 |
| Separol Madera | Varios Generales | Plástico, 10 KG | 40.96 |
| Tira de Copal 4x5 cm | Madera aserrada, cepillada y/o escuadrada (preparada) | uni 3.00 m | 2.6 |
| Tablero Plywood de 15 mm Clase Industrial | Madera aserrada, cepillada y/o escuadrada (preparada) | Uni 1.22x2.44 m | 26.79 |
| Transporte en Camión capacidad de 200 qq | Transporte General |  |  |
| Puntales extensibles 2.1-3.65m | Andamios / Encofrados |  | 0.1 |
| Material menudo de instalación | Varios Generales | U | 1.1 |
| Escalera telescópica | Herramienta menor / Equipo Liviano para obras eléctricas y telefónicas |  | 2.5 |
| Cinta aislante 3M de 20 yardas | Varios Generales | U | 0.89 |
| Tomacorriente doble polarizado completo con toma de tierra | Varios Generales | U | 3.29 |
| Elevador | Herramienta menor / Equipo Liviano para obras civiles |  | 4 |
| Cuartones de encofrado | Madera aserrada, cepillada y/o escuadrada (preparada) | u | 2.96 |
| Cerámica de 20x30cm | Azulejos y cerámicos vitrificados | m2 | 9.36 |
| Bondex plus | Productos químicos para hormigón y morteros | Kg | 0.44 |
| Tubería PVC presión roscable 1/2” 420 PSI | Tubos y accesorios de PVC - para presión | m. | 1.38 |
| Codo PVC 90 CED 40 (p/presión) roscable 1/2” | Tubos y accesorios de PVC - para presión | u | 0.62 |
| Tee PVC CED (p/presión) roscable 1/2” | Tubos y accesorios de PVC - para presión | u | 1.09 |
| Unión PVC CED 40 roscable 1/2” | Tubos y accesorios de PVC - para presión | u | 0.91 |
| Neplo flex 1/2” | Tubos y accesorios de PVC - para presión | u | 0.24 |
| Universal PVC CED 40 roscable 1/2” | Tubos y accesorios de PVC - para presión | u | 1.48 |
| Sifón PVC desagüe 50mm | Tubos y accesorios de PVC - para alcantarillado | u | 4.03 |
| Alambre sólido THHN 12 AWG | Alambres y cables para Inst. eléctricas | u | 0.8 |
| Tubería galv. Em 1/2"x3m | Tubos y Acc.de hierro o acero galvanizado para instalaciones eléctricas | u | 3.94 |
| Caja rectangular profunda nacional | Varios para obras eléctricas, electrónicas y de teléfonos | u | 0.57 |
| Caja octogonal grande nacional | Varios para obras eléctricas, electrónicas y de teléfonos | u | 0.42 |
| Plafón losa | Instalaciones eléctricas (vivienda) | u | 0.36 |
| Aislamiento poliuretano e=5mm | Varios Generales | m2 | 3 |
| Correa G80x40x15x1.5 | Perfiles estructurales de acero | m. | 1.5 |
| Puerta de madera de 0.75x2.10 incluye marco cerradura y accesorios de instalación | Madera aserrada, cepillada y/o escuadrada (preparada) | u | 49 |
| Malla Nervometálica de 0.6x2.2m | Mallas diversas (tumbados) | u | 3.94 |
| Teja antesanal tipo antigua | Varios Generales | u | 0.4 |

## Schedule

| ID | WBS | Task | Duration | Start | Finish | Predecessors | Total slack | Free slack | Resources | Work | Cost |
| --- | --- | --- | --- | --- | --- | --- | --- | --- | --- | --- | --- |
| 1 | 1 | **CONSTRUCCIÓN DE 40 VIVIENDAS NUEVAS Y 02 MEJORAMINETOS DE VIVIENDA DEL PROYECTO LA UNION, UBICADO EN LA PARROQUIA JAVIER LOYOLA, CANTÓN AZOGUES, PROVINCIA DEL CAÑAR** | 100.25d | 2014-08-04 | 2014-11-28 |  | 0d |  |  | 23730.4h | 214,214.33 |
| 2 | 1.1 | **PRESUPUESTO PARA VIVIENDA NUEVA** | 99.25d | 2014-08-04 | 2014-11-27 |  | 0d |  |  | 23306.7h | 210,716.1 |
| 3 | 1.1.1 | **REPLANTEO Y NIVELACIÓN** | 9d | 2014-08-04 | 2014-08-13 |  | 0d |  |  | 236.41h | 1,329.82 |
| 4 | 1.1.1.1 | Replanteo y nivelación | 9d | 2014-08-04 | 2014-08-13 |  | 0d |  | Topógrafo 2: título exper. mayor a 5 años (Estr. Oc. C1) [20%]; Cadenero [130%]; Equipo de topografía [60%]; Pingos de eucalipto [123.84 m.]; Tiras de eucalipto 2 x 2 x 300 cm [309.6 u]; Clavos [30.96 kg]; Peón [60%]; Herramientas manuales [60%] | 236.41h | 1,329.82 |
| 5 | 1.1.2 | **ESTRUCTURAS DE HORMIGÓN** | 28.25d | 2014-08-04 | 2014-09-05 |  | 1d |  |  | 824.62h | 10,588.01 |
| 6 | 1.1.2.1 | Excavación cimientos | 28.25d | 2014-08-04 | 2014-09-05 | 4SS | 1d | 0d | Peón [120%]; Maestro mayor en ejecución de obras civiles [10%]; Herramientas varias [60%] | 429.4h | 933.38 |
| 7 | 1.1.2.2 | Hormigón ciclópeo en cimientos (60% HºSº, 40% piedra) | 18.75d | 2014-08-06 | 2014-08-27 | 6SS+2d | 1d | 0d | Peón [120%]; Maestro mayor en ejecución de obras civiles [10%]; Herramientas varias [110%]; Albañil [10%]; Piedra puesta en obra [77.7 m3]; Agua [37629 lt]; Concretera un saco [20%]; Arena puesta en obra [69.93 m3]; Grava puesta en obra [116.55 m3]; Cemento Portland Tipo I [641.02 saco 50 kg] | 395.22h | 9,654.63 |
| 8 | 1.1.3 | **CADENA INFERIOR** | 20.25d | 2014-08-06 | 2014-08-29 |  | 1d |  |  | 840.19h | 13,093.85 |
| 9 | 1.1.3.1 | Hormigón simple 210 Kg/cm2 para cadenas, incl. encofrado | 3d | 2014-08-26 | 2014-08-29 | 10FF | 1d | 0d | Pingos de eucalipto [501.58 m.]; Clavos [47.02 kg]; Peón [600%]; Maestro mayor en ejecución de obras civiles [80%]; Herramientas varias [480%]; Albañil [160%]; Agua [8460 lt]; Concretera un saco [60%]; Arena puesta en obra [28.2 m3]; Grava puesta en obra [47 m3]; Cemento Portland Tipo I [352.5 saco 50 kg]; Vibrador [20%]; Aditivo plastificante [14.1 lt]; Tabla ordinaria de monte 28 x 2.5 x 300 cm [222.58 u]; Tiras de eucalipto 4 x 5 x 300 cm. [250.79 u] | 321.79h | 5,694.44 |
| 10 | 1.1.3.2 | Vigas electrosoldadas (vigas tipo VC5) | 20.25d | 2014-08-06 | 2014-08-29 | 7SS | 1d | 0d | Peón; Maestro mayor en ejecución de obras civiles [20%]; Herramientas varias; Albañil; Viga electrosoldada V5 [279.82 u] | 518.4h | 7,399.41 |
| 11 | 1.1.4 | **COLUMNAS** | 14d | 2014-10-03 | 2014-10-20 |  | 1d |  |  | 688.92h | 8,753.19 |
| 12 | 1.1.4.1 | Hormigón simple 210 kg/cm2 para columna, incluye encofrado | 8.5d | 2014-10-09 | 2014-10-20 | 13FF | 1d | 0d | Peón [190%]; Herramientas manuales [70%]; Maestro mayor en ejecución de obras civiles [20%]; Herramientas varias [50%]; Albañil [20%]; Agua [4680 lt]; Concretera un saco [10%]; Arena puesta en obra [15.6 m3]; Grava puesta en obra [26 m3]; Cemento Portland Tipo I [195 saco 50 kg]; Vibrador [10%]; Aditivo plastificante [13 lt]; Herramienta manual [10%]; Encofrador [10%]; Puntales extensibles 2.1-3.65m [60%]; Carpintero [50%]; Sierra Circular [50%]; Clavo 1 1/2 x 16 (25kg/caja) [26 kg]; Sika Cola Blanca [6.5 Plástico 4 kg]; Tira de Copal 4x5 cm [260 uni 3.00 m]; Tablero Plywood de 15 mm Clase Industrial [22.1 Uni 1.22x2.44 m]; Separol Madera [0.97 Plástico, 10 KG]; Agua en obra (Incluye instalaciones provisionales) [1625 litro]; Transporte en Camión capacidad de 200 qq [0.1%] | 366.6h | 4,257.08 |
| 13 | 1.1.4.2 | Vigas electrosoldadas (vigas tipo VC5) | 14d | 2014-10-03 | 2014-10-20 | 53 | 1d | 0d | Peón [90%]; Maestro mayor en ejecución de obras civiles [20%]; Herramientas varias [90%]; Albañil [90%]; Viga electrosoldada V5 [169.32 u] | 322.32h | 4,496.11 |
| 14 | 1.1.5 | **VIGA SUPERIOR** | 17.25d | 2014-10-14 | 2014-11-03 |  | 1d |  |  | 1212.07h | 15,086.33 |
| 15 | 1.1.5.1 | Hormigón simple 210 kg/cm2, para vigas incl. encofrado | 12.75d | 2014-10-20 | 2014-11-03 | 16FF | 1d | 0d | Pingos de eucalipto [376 m.]; Clavos [35.25 kg]; Peón [390%]; Herramientas manuales [120%]; Maestro mayor en ejecución de obras civiles [30%]; Herramientas varias; Albañil [30%]; Agua [8460 lt]; Concretera un saco [10%]; Arena puesta en obra [28.2 m3]; Grava puesta en obra [47 m3]; Cemento Portland Tipo I [352.5 saco 50 kg]; Vibrador; Aditivo plastificante [23.5 lt]; Tabla ordinaria de monte 28 x 2.5 x 300 cm [166.85 u]; Tiras de eucalipto 4 x 5 x 300 cm. [188 u]; Separol Madera [11.74 Plástico, 10 KG]; Agua en obra (Incluye instalaciones provisionales) [19387.5 litro]; Transporte en Camión capacidad de 200 qq [0.1%]; Elevador | 688.87h | 7,659.98 |
| 16 | 1.1.5.2 | Vigas electrosoldadas (vigas tipo VC5) | 17.25d | 2014-10-14 | 2014-11-03 | 12SS+4d | 1d | 0d | Peón [120%]; Maestro mayor en ejecución de obras civiles [20%]; Herramientas varias [120%]; Albañil [120%]; Viga electrosoldada V5 [280.84 u] | 523.2h | 7,426.35 |
| 17 | 1.1.6 | **DINTELES PUERTAS** | 1d | 2014-11-03 | 2014-11-03 |  | 21.25d |  |  | 42.38h | 450.09 |
| 18 | 1.1.6.1 | Hormigón simple 210 kg/cm2, para vigas incl. encofrado | 0.5d | 2014-11-03 | 2014-11-03 | 19FF | 21.25d |  | Pingos de eucalipto [16 m.]; Clavos [1.5 kg]; Peón [430%]; Herramientas manuales [130%]; Maestro mayor en ejecución de obras civiles [30%]; Herramientas varias [110%]; Albañil [30%]; Agua [360 lt]; Concretera un saco [20%]; Arena puesta en obra [1.2 m3]; Grava puesta en obra [2 m3]; Cemento Portland Tipo I [15 saco 50 kg]; Vibrador [10%]; Aditivo plastificante [1 lt]; Tabla ordinaria de monte 28 x 2.5 x 300 cm [7.1 u]; Tiras de eucalipto 4 x 5 x 300 cm. [8 u]; Separol Madera [0.5 Plástico, 10 KG]; Agua en obra (Incluye instalaciones provisionales) [825 litro]; Transporte en Camión capacidad de 200 qq [0.1%]; Elevador [10%] | 29.58h | 326.74 |
| 19 | 1.1.6.2 | Escalerilla electrosoldada (vigas tipo V1) | 0.5d | 2014-11-03 | 2014-11-03 | 15FF | 21.25d | 0d | Peón; Maestro mayor en ejecución de obras civiles [20%]; Herramientas varias; Albañil; Viga electrosoldada V1 [6.8 u] | 12.8h | 123.34 |
| 20 | 1.1.7 | **DINTELES VENTANAS** | 1d | 2014-11-03 | 2014-11-03 |  | 21.25d |  |  | 56.42h | 612.05 |
| 21 | 1.1.7.1 | Hormigón simple 210 kg/cm2, para vigas incl. encofrado | 1d | 2014-11-03 | 2014-11-03 | 22FF | 21.25d |  | Pingos de eucalipto [24 m.]; Clavos [2.25 kg]; Peón [320%]; Herramientas manuales [90%]; Maestro mayor en ejecución de obras civiles [20%]; Herramientas varias [80%]; Albañil [20%]; Agua [540 lt]; Concretera un saco [10%]; Arena puesta en obra [1.8 m3]; Grava puesta en obra [3 m3]; Cemento Portland Tipo I [22.5 saco 50 kg]; Vibrador; Aditivo plastificante [1.5 lt]; Tabla ordinaria de monte 28 x 2.5 x 300 cm [10.65 u]; Tiras de eucalipto 4 x 5 x 300 cm. [12 u]; Separol Madera [0.75 Plástico, 10 KG]; Agua en obra (Incluye instalaciones provisionales) [1237.5 litro]; Transporte en Camión capacidad de 200 qq [0.1%]; Elevador | 43.62h | 488.7 |
| 22 | 1.1.7.2 | Escalerilla electrosoldada (vigas tipo V1) | 0.5d | 2014-11-03 | 2014-11-03 | 15FF | 21.25d | 0d | Peón; Maestro mayor en ejecución de obras civiles [20%]; Herramientas varias; Albañil; Viga electrosoldada V1 [6.8 u] | 12.8h | 123.34 |
| 23 | 1.1.8 | **MAMPOSTERÍA** | 30d | 2014-10-16 | 2014-11-20 |  | 2.5d |  |  | 2815.4h | 32,170.65 |
| 24 | 1.1.8.1 | Mampostería de bloque (40x20x15cm) canaleado | 30d | 2014-10-16 | 2014-11-20 | 16SS+2d | 2.5d | 0d | Peón [370%]; Maestro mayor en ejecución de obras civiles [70%]; Herramientas varias [380%]; Albañil [350%]; Agua [13500 lt]; Arena puesta en obra [62.1 m3]; Cemento Portland Tipo I [540 saco 50 kg]; Bloque pomez de 40 × 20 × 15 cm [35100 u] | 2805h | 32,051.97 |
| 25 | 1.1.8.2 | Bordillo de tina de baño (40x20x15cm) | 0.75d | 2014-11-20 | 2014-11-20 | 24FF | 6.5d |  | Peón [70%]; Maestro mayor en ejecución de obras civiles [10%]; Herramientas varias [70%]; Albañil [60%]; Agua [50 lt]; Arena puesta en obra [0.23 m3]; Cemento Portland Tipo I [2 saco 50 kg]; Bloque pomez de 40 × 20 × 15 cm [130 u] | 10.4h | 118.68 |

| ID | WBS | Task | Duration | Start | Finish | Predecessors | Total slack | Free slack | Resources | Work | Cost |
| --- | --- | --- | --- | --- | --- | --- | --- | --- | --- | --- | --- |
| 26 | 1.1.9 | **CUBIERTA** | 30d | 2014-10-23 | 2014-11-27 |  | 1d |  |  | 4721.03h | 38,381.93 |
| 27 | 1.1.9.1 | Cubierta metálica prepintada, e=4mm con aislamiento poliuretano e=5mm (incluye cumbrero) | 30d | 2014-10-23 | 2014-11-27 | 29FF | 1d | 0d | Peón [290%]; Maestro mayor en ejecución de obras civiles [60%]; Herramientas varias [290%]; Fierrero [290%]; Varios [232.9 Global]; Cubierta de galvalume prepintado e=0.40mm [2422.16 m2]; Caballete para galvalume e=3mm [116.45 u]; Aislamiento poliuretano e=5mm [2422.16 m2] | 2227.75h | 25,279.75 |
| 28 | 1.1.9.2 | Cumbrero de teja | 1d | 2014-11-26 | 2014-11-27 | 29FF | 1d |  | Clavos [139 kg]; Peón [2980%]; Maestro mayor en ejecución de obras civiles [440%]; Herramientas varias [2940%]; Albañil [1410%]; Agua [868.75 lt]; Arena puesta en obra [4 m3]; Cemento Portland Tipo I [34.75 saco 50 kg]; Teja antesanal tipo antigua [1334.4 u]; Malla Nervometálica de 0.6x2.2m [42.81 u] | 621.28h | 2,535.85 |
| 29 | 1.1.9.3 | Kit correas G80x40x15x1.5 con pintura anticorrosiva | 30d | 2014-10-23 | 2014-11-27 | 15SS+3d | 1d | 0d | Maestro mayor en ejecución de obras civiles [30%]; Herramientas varias [150%]; Fierrero [150%]; Pintura anticorrosiva + diluyente [120.45 gl]; Compresor 2 HP [150%]; Técnico electromecánico de construcción [150%]; Soldadora [150%]; Suelda [481.8 kg]; Correa G80x40x15x1.5 [2649.9 m.] | 1872h | 10,566.34 |
| 30 | 1.1.10 | **INSTALACIONES SANITARIAS Y AGUA POTABLE** | 38.25d | 2014-09-29 | 2014-11-12 |  | 14d |  |  | 2158.67h | 14,166.07 |
| 31 | 1.1.10.1 | Instalaciones de agua | 22.5d | 2014-10-16 | 2014-11-12 | 24SS | 14d | 0d | Peón; Maestro mayor en ejecución de obras civiles [20%]; Herramientas varias; Plomero; Teflón [96 rollo]; Tubería PVC presión roscable 1/2” 420 PSI [180 m.]; Codo PVC 90 CED 40 (p/presión) roscable 1/2” [240 u]; Tee PVC CED (p/presión) roscable 1/2” [120 u]; Unión PVC CED 40 roscable 1/2” [120 u]; Neplo flex 1/2” [120 u]; Universal PVC CED 40 roscable 1/2” [60 u] | 576h | 2,076 |
| 32 | 1.1.10.2 | Instalaciones de agua para ducha | 8d | 2014-11-03 | 2014-11-12 | 31FF | 14d |  | Peón; Maestro mayor en ejecución de obras civiles [20%]; Herramientas varias; Plomero; Teflón [32 rollo]; Tubería PVC presión roscable 1/2” 420 PSI [60 m.]; Codo PVC 90 CED 40 (p/presión) roscable 1/2” [80 u]; Tee PVC CED (p/presión) roscable 1/2” [40 u]; Unión PVC CED 40 roscable 1/2” [40 u]; Neplo flex 1/2” [40 u]; Universal PVC CED 40 roscable 1/2” [20 u] | 204.8h | 720.14 |
| 33 | 1.1.10.3 | Instalaciones de desagüe PVC 50 mm | 10.5d | 2014-09-29 | 2014-10-10 | 53SS | 38.25d | 0d | Peón; Maestro mayor en ejecución de obras civiles [20%]; Herramientas varias; Plomero; Kalipega [6 gl]; Yee de PVC de 50mm para desagüe [120 u]; Tubería PVC desagüe d=50 mm Tipo B [180 m.]; Codo PVC desagüe 50 mm 90° [360 u] | 268.8h | 1,759.28 |
| 34 | 1.1.10.4 | Instalaciones de desagüe PVC 110 mm | 3.5d | 2014-10-10 | 2014-10-14 | 33 | 38.25d |  | Peón; Maestro mayor en ejecución de obras civiles [20%]; Herramientas varias; Plomero; Kalipega [2 gl]; Codo PVC 110 mm x 90 grados desagüe [120 u]; Yee de PVC de 110mm para desagüe [40 u]; Tubería PVC desague tipo B 110 mm [60 m.] | 89.6h | 1,030.03 |
| 35 | 1.1.10.5 | Mesón de cocina (bloque pomez) | 7.5d | 2014-10-16 | 2014-10-25 | 24SS | 16.5d | 0d | Pingos de eucalipto [67.2 m.]; Clavos [2.88 kg]; Peón [120%]; Herramientas manuales [20%]; Maestro mayor en ejecución de obras civiles [20%]; Albañil [90%]; Arena puesta en obra [2.12 m3]; Grava puesta en obra [1.24 m3]; Cemento Portland Tipo I [18 saco 50 kg]; Tabla ordinaria de monte 28 x 2.5 x 300 cm [15.36 u]; Herramienta manual [80%]; Separol Madera [0.96 Plástico, 10 KG]; Agua en obra (Incluye instalaciones provisionales) [1200 litro]; Transporte en Camión capacidad de 200 qq [0.1%]; Bloque de 10x20x40 [312 u]; Malla electrosoldada R 106 [25.2 m2]; Tiras de eucalipto 4 x 5 x 300 cm [9.6 u] | 190.18h | 1,027.02 |
| 36 | 1.1.10.6 | Fregadero de cocina | 3.5d | 2014-10-25 | 2014-10-29 | 35 | 16.5d | 0d | Maestro mayor en ejecución de obras civiles [20%]; Herramientas varias; Albañil; Plomero; Teflon [4 u]; Sifon y desague [40 u]; Llave cuello de cisne [40 u]; Fregadero de 1p 60x40 blanco [40 u] | 89.6h | 1,525.21 |
| 37 | 1.1.10.7 | Inodoro blanco nacional | 4d | 2014-10-25 | 2014-10-30 | 36SS | 25d |  | Maestro mayor en ejecución de obras civiles [20%]; Herramientas varias; Albañil; Arena puesta en obra [0.08 m3]; Cemento Portland Tipo I [0.8 saco 50 kg]; Plomero; Teflon [4 u]; Inodoro blanco nacional [40 u]; Tubo de Abasto [40 u] | 102.4h | 1,879.59 |
| 38 | 1.1.10.8 | Lavamanos blanco | 4d | 2014-10-25 | 2014-10-30 | 36SS | 25d |  | Maestro mayor en ejecución de obras civiles [20%]; Albañil; Herramienta manual; Plomero; Teflon [4 u]; Sifon y desague [40 u]; Tubo de Abasto [40 u]; Griferia [40 u]; Uñetas de Sujecion [40 jgo]; Tornillo y taco fisher [80 u]; Lavado Blanco [40 u] | 102.4h | 1,594.31 |
| 39 | 1.1.10.9 | Rejilla para piso d= 2" | 3.75d | 2014-10-25 | 2014-10-29 | 36SS | 25.25d |  | Peón; Maestro mayor en ejecución de obras civiles [20%]; Herramientas varias; Cemento Portland Tipo I [0.4 saco 50 kg]; Plomero; Kalipega [0.4 gl]; Rejilla de piso de 2" [40 u]; Sifón PVC desagüe 50mm [40 u] | 96h | 655.44 |
| 40 | 1.1.10.10 | Pozo de revisión 40x40cm,con tapa de HºAº | 12.5d | 2014-10-25 | 2014-11-08 | 36SS | 16.5d |  | Pingos de eucalipto [35 m.]; Clavos [1.5 kg]; Peón [110%]; Herramientas manuales [10%]; Maestro mayor en ejecución de obras civiles [20%]; Herramientas varias [140%]; Albañil [110%]; Agua [596 lt]; Concretera un saco; Arena puesta en obra [2.58 m3]; Grava puesta en obra [1.1 m3]; Cemento Portland Tipo I [23.17 saco 50 kg]; Tabla ordinaria de monte 28 x 2.5 x 300 cm [8 u]; Separol Madera [0.5 Plástico, 10 KG]; Agua en obra (Incluye instalaciones provisionales) [625 litro]; Transporte en Camión capacidad de 200 qq [0.1%]; Fierrero [10%]; Varios [2.45 Global]; Tiras de eucalipto 4 x 5 x 300 cm [5 u]; Suelda [8 kg]; Soldadora portatil [40%]; Angulo (1 1/2" x 1/8") [160 m.]; Ladrillo panelón 28 x 14 x 9 cm [1408 u]; Andamios [44 u]; Cortadora [10%]; Acero en varillas [102.9 kg]; Alambre de amarre No. 18 negro recocido [4.9 kg] | 438.89h | 1,899.03 |
| 41 | 1.1.11 | **INSTALACIONES ELÉCTRICAS** | 30.75d | 2014-10-16 | 2014-11-21 |  | 5.75d |  |  | 1462.8h | 9,307.32 |
| 42 | 1.1.11.1 | Puntos de iluminación | 25d | 2014-10-16 | 2014-11-14 | 24SS | 11.5d | 0d | Peón; Herramientas varias; Electricista; Unión EMT de 1/2" [400 u]; Alambre galvanizado #18 [10 kg]; Maestro electrico/liniero/subestación [20%]; Alambre sólido THHN 12 AWG [2000 u]; Tubería galv. Em 1/2"x3m [200 u]; Caja rectangular profunda nacional [200 u]; Caja octogonal grande nacional [200 u]; Plafón losa [200 u] | 640h | 4,220.2 |
| 43 | 1.1.11.2 | Puntos de tomacorrientes | 20d | 2014-10-16 | 2014-11-08 | 42SS | 16.5d |  | Peón; Maestro mayor en ejecución de obras civiles [20%]; Herramienta manual; Electricista; Tomacorrientes dobles [160 u]; Manguera Electrica [560 ml]; Cable Electrico #12 [1280 ml]; Cajetin Rectangular [160 u]; Taipes [16 u] | 512h | 2,422.4 |
| 44 | 1.1.11.3 | Caja de breakers (6u) incluye breakers (3) | 5d | 2014-11-15 | 2014-11-21 | 45SS | 5.75d |  | Peón; Herramientas varias; Varios [40 Global]; Electricista; Maestro electrico/liniero/subestación [20%]; Multímetro; Centro de carga 1F 06 polos [40 u]; Breaker 1F 10-50 A enchufable [120 u] | 168h | 2,131.84 |
| 45 | 1.1.11.4 | Tomacorriente para 220V | 4.25d | 2014-11-15 | 2014-11-20 | 24FF | 5.75d | 0d | Herramientas manuales; Electricista [200%]; Maestro electrico/liniero/subestación [20%]; Cajetin rectangular profundo [40 u]; Material menudo de instalación [40 U]; Escalera telescópica; Cinta aislante 3M de 20 yardas [10 U]; Tomacorriente doble polarizado completo con toma de tierra [40 U] | 142.8h | 532.88 |
| 46 | 1.1.12 | **CARPINTERÍA HIERRO MADERA** | 24.75d | 2014-10-27 | 2014-11-24 |  | 3.25d |  |  | 725.6h | 18,421.07 |
| 47 | 1.1.12.1 | Puerta principal metálica 0.90x2.10m | 6d | 2014-10-27 | 2014-11-03 | 59SS+3d | 16d | 0d | Maestro mayor en ejecución de obras civiles [20%]; Albañil [200%]; Herramienta manual; Soldadora; Puerta metalica de 0.90x2.10m incluye accesorios de instalación [40 u] | 201.6h | 4,083.65 |
| 48 | 1.1.12.2 | Puertas de madera de 0.90x2.10 incluye marco | 6d | 2014-11-03 | 2014-11-10 | 47 | 16d | 0d | Peón [150%]; Maestro mayor en ejecución de obras civiles [30%]; Herramienta manual [150%]; Carpintero [150%]; Puerta de madera de 0.90x2.10 incluye marco cerradura y accesorios de instalación [120 u] | 230.4h | 6,626.59 |
| 49 | 1.1.12.3 | Puertas de madera de 0.75x2.10 incluye marco | 2.5d | 2014-11-03 | 2014-11-05 | 48SS | 19.5d |  | Peón; Maestro mayor en ejecución de obras civiles [20%]; Herramienta manual; Carpintero; Puerta de madera de 0.75x2.10 incluye marco cerradura y accesorios de instalación [40 u] | 64h | 2,100.72 |
| 50 | 1.1.12.4 | Ventana de hierro incluye vidrio de 3mm y protecciones de hierro | 13.25d | 2014-11-08 | 2014-11-24 | 24SS+20d | 3.25d |  | Peón [70%]; Maestro mayor en ejecución de obras civiles [10%]; Albañil [70%]; Herramienta manual [70%]; Ventana de hierro con vidrio de 3mm incluye protección y accesorios de instalación [146 m2] | 229.6h | 5,610.11 |

| ID | WBS | Task | Type | Duration | Start | Finish | Predecessors | Total slack | Free slack | Resources | Work | Cost |
| --- | --- | --- | --- | --- | --- | --- | --- | --- | --- | --- | --- | --- |
| 51 | 1.1.13 | **PISOS** |  | 30d | 2014-08-29 | 2014-10-03 |  | 1d |  |  | 1718.8h | 12,535.45 |
| 52 | 1.1.13.1 | Replantillo de piedra e = 15 cm |  | 30d | 2014-08-29 | 2014-10-03 | 9 | 1d | 0d | Peón [190%]; Maestro mayor en ejecución de obras civiles [40%]; Herramientas varias [190%]; Albañil [190%]; Piedra puesta en obra [212.8 m3]; Grava puesta en obra [26.6 m3] | 1461.1h | 6,752.64 |
| 53 | 1.1.13.2 | Fundición de contrapiso e=5cm fc=180 kg/cm2 |  | 4.25d | 2014-09-29 | 2014-10-03 | 52FF | 1d | 0d | Peón [320%]; Maestro mayor en ejecución de obras civiles [30%]; Herramientas varias [340%]; Albañil [20%]; Agua [11880 lt]; Concretera un saco [60%]; Arena puesta en obra [39.6 m3]; Grava puesta en obra [66 m3]; Cemento Portland Tipo I [455.4 saco 50 kg]; Vibrador [10%]; Cuartones de encofrado [132 u] | 257.7h | 5,782.81 |
| 54 | 1.1.14 | **ENLUCIDO** |  | 32.5d | 2014-10-20 | 2014-11-27 |  | 1d |  |  | 2769.77h | 11,189.18 |
| 55 | 1.1.14.1 | Enlucido int. ext |  | 30d | 2014-10-20 | 2014-11-24 | 24SS+3d | 3.5d | 0d | Peón [250%]; Maestro mayor en ejecución de obras civiles [50%]; Herramientas varias [260%]; Albañil [230%]; Agua [12000 lt]; Arena puesta en obra [55.2 m3]; Cemento Portland Tipo I [480 saco 50 kg] | 1891.2h | 8,443.78 |
| 56 | 1.1.14.2 | Sellado de junta con mortero entre plancha de cubieta y cadena superior |  | 30d | 2014-10-23 | 2014-11-27 | 27SS | 1d |  | Peón [120%]; Maestro mayor en ejecución de obras civiles [20%]; Herramientas varias [120%]; Albañil [110%]; Agua [2182.5 lt]; Arena puesta en obra [10.04 m3]; Cemento Portland Tipo I [43.65 saco 50 kg]; Cal apagada [2182.5 Kg] | 878.57h | 2,745.4 |
| 57 | 1.1.15 | **CERÁMICA** |  | 30d | 2014-10-23 | 2014-11-27 |  | 1d |  |  | 1875.6h | 22,133.03 |
| 58 | 1.1.15.1 | Suministro e instalación de cerámica pared |  | 19d | 2014-11-03 | 2014-11-25 | 24SS+15d | 2.5d |  | Maestro mayor en ejecución de obras civiles [20%]; Herramientas varias [110%]; Albañil [110%]; Emporado para pisos y paredes [63.2 Kg]; Cerámica de 20x30cm [331.8 m2]; Bondex plus [1106 Kg] | 346.4h | 4,287.54 |
| 59 | 1.1.15.2 | Suministro e instalación de cerámica piso |  | 30d | 2014-10-23 | 2014-11-27 | 27SS | 1d | 0d | Maestro mayor en ejecución de obras civiles [60%]; Herramientas varias [290%]; Albañil [290%]; Emporado para pisos y paredes [274.4 Kg]; Bondex plus [4802 Kg]; Cerámico nacional de 30x30 [1440.6 m2] | 1529.2h | 17,845.49 |
| 60 | 1.1.16 | **PINTURA** |  | 13.25d | 2014-11-06 | 2014-11-21 |  | 5.25d |  |  | 1158h | 2,498.06 |
| 61 | 1.1.16.1 | Pintura caucho int-ext (dos manos) incl. fondo |  | 13.25d | 2014-11-06 | 2014-11-21 | 55SS+15d | 5.25d |  | Maestro mayor en ejecución de obras civiles [30%]; Herramientas varias [150%]; Agua [64.48 lt]; Pintor [310%]; Módulo andamio metálico h= 1.5 m [610%]; Lija [161.2 pliego]; Fondo yeso cola [4.03 gl]; Albalux [80.6 kg]; Pintura de caucho [64.48 gal] | 1158h | 2,498.06 |
| 62 | 1.2 | **PRESUPUESTO PARA MEJORAMIENTO DE LA VIVIENDA DE LA SR. MANUEL SUMBA VELECELA** |  | 8.5d | 2014-11-04 | 2014-11-13 |  | 0d |  |  | 184.48h | 1,796.45 |
| 63 | 1.2.1 | **TRABAJOS PRELIMINARES** |  | 0.25d | 2014-11-04 | 2014-11-04 |  | 0d |  |  | 6.14h | 28.15 |
| 64 | 1.2.1.1 | Replanteo y nivelación |  | 0.25d | 2014-11-04 | 2014-11-04 | 4SS+79d | 0d |  | Topógrafo 2: título exper. mayor a 5 años (Estr. Oc. C1) [20%]; Cadenero [120%]; Equipo de topografía [60%]; Pingos de eucalipto [1.28 m.]; Tiras de eucalipto 2 x 2 x 300 cm [3.2 u]; Clavos [0.32 kg]; Peón [60%]; Herramientas manuales [60%] | 6.14h | 28.15 |
| 65 | 1.2.2 | **ESTRUCTURAS DE HORMIGÓN** |  | 0.5d | 2014-11-04 | 2014-11-04 |  | 0d |  |  | 5.31h | 59.63 |
| 66 | 1.2.2.1 | Excavación cimientos |  | 0.25d | 2014-11-04 | 2014-11-04 | 64 | 0d |  | Peón [90%]; Maestro mayor en ejecución de obras civiles [10%]; Herramientas varias [40%] | 2.45h | 5.26 |
| 67 | 1.2.2.2 | Hormigón ciclópeo en cimientos (60% HºSº, 40% piedra) |  | 0.25d | 2014-11-04 | 2014-11-04 | 66 | 0d |  | Peón [80%]; Maestro mayor en ejecución de obras civiles [10%]; Herramientas varias [80%]; Albañil [10%]; Piedra puesta en obra [0.42 m3]; Agua [203.4 lt]; Concretera un saco [20%]; Arena puesta en obra [0.38 m3]; Grava puesta en obra [0.63 m3]; Cemento Portland Tipo I [3.46 saco 50 kg] | 2.86h | 54.37 |
| 68 | 1.2.3 | **CADENA INFERIOR** |  | 0.25d | 2014-11-04 | 2014-11-04 |  | 0d |  |  | 6.4h | 121.86 |
| 69 | 1.2.3.1 | Hormigón simple 210 Kg/cm2 para cadenas, incl. encofrado | milestone | 0d | 2014-11-04 | 2014-11-04 | 70FF | 0d |  | Pingos de eucalipto [1 m.]; Clavos [1 kg]; Peón; Maestro mayor en ejecución de obras civiles; Herramientas varias; Albañil; Agua [1 lt]; Concretera un saco; Arena puesta en obra [1 m3]; Grava puesta en obra [1 m3]; Cemento Portland Tipo I [1 saco 50 kg]; Vibrador; Aditivo plastificante [1 lt]; Tabla ordinaria de monte 28 x 2.5 x 300 cm [1 u]; Tiras de eucalipto 4 x 5 x 300 cm. [1 u] |  | 46.94 |
| 70 | 1.2.3.2 | Vigas electrosoldadas (vigas tipo VC5) |  | 0.25d | 2014-11-04 | 2014-11-04 | 67 | 0d |  | Peón; Maestro mayor en ejecución de obras civiles [20%]; Herramientas varias; Albañil; Viga electrosoldada V5 [2.72 u] | 6.4h | 74.92 |
| 71 | 1.2.4 | **COLUMNA** |  | 1d | 2014-11-05 | 2014-11-06 |  | 0d |  |  | 6.4h | 170.47 |
| 72 | 1.2.4.1 | Hormigón simple 210 kg/cm2, para vigas incl. encofrado | milestone | 0d | 2014-11-05 | 2014-11-06 | 73FF | 0d |  | Pingos de eucalipto [1 m.]; Clavos [1 kg]; Peón; Herramientas manuales; Maestro mayor en ejecución de obras civiles; Herramientas varias; Albañil; Agua [1 lt]; Concretera un saco; Arena puesta en obra [1 m3]; Grava puesta en obra [1 m3]; Cemento Portland Tipo I [1 saco 50 kg]; Vibrador; Aditivo plastificante [1 lt]; Tabla ordinaria de monte 28 x 2.5 x 300 cm [1 u]; Tiras de eucalipto 4 x 5 x 300 cm. [1 u]; Separol Madera [1 Plástico, 10 KG]; Agua en obra (Incluye instalaciones provisionales) [1 litro]; Transporte en Camión capacidad de 200 qq [0.1%]; Elevador |  | 87.95 |
| 73 | 1.2.4.2 | Vigas electrosoldadas (vigas tipo VC5) |  | 0.25d | 2014-11-06 | 2014-11-06 | 87 | 0d |  | Peón; Maestro mayor en ejecución de obras civiles [20%]; Herramientas varias; Albañil; Viga electrosoldada V5 [3.06 u] | 6.4h | 82.52 |
| 74 | 1.2.5 | **VIGA SUPERIOR** |  | 1d | 2014-11-05 | 2014-11-06 |  | 0d |  |  | 30.18h | 277.82 |
| 75 | 1.2.5.1 | Hormigón simple 210 kg/cm2, para vigas incl. encofrado |  | 0.25d | 2014-11-05 | 2014-11-06 | 76FF | 0d |  | Pingos de eucalipto [8 m.]; Clavos [0.75 kg]; Peón [530%]; Herramientas manuales [160%]; Maestro mayor en ejecución de obras civiles [40%]; Herramientas varias [130%]; Albañil [40%]; Agua [180 lt]; Concretera un saco [20%]; Arena puesta en obra [0.6 m3]; Grava puesta en obra [1 m3]; Cemento Portland Tipo I [7.5 saco 50 kg]; Vibrador [10%]; Aditivo plastificante [0.5 lt]; Tabla ordinaria de monte 28 x 2.5 x 300 cm [3.55 u]; Tiras de eucalipto 4 x 5 x 300 cm. [4 u]; Separol Madera [0.25 Plástico, 10 KG]; Agua en obra (Incluye instalaciones provisionales) [412.5 litro]; Transporte en Camión capacidad de 200 qq [0.1%]; Elevador [10%] | 17.38h | 169.81 |
| 76 | 1.2.5.2 | Vigas electrosoldadas (vigas tipo VC5) |  | 0.5d | 2014-11-06 | 2014-11-06 | 72 | 0d |  | Peón; Maestro mayor en ejecución de obras civiles [20%]; Herramientas varias; Albañil; Viga electrosoldada V5 [3.57 u] | 12.8h | 108 |

| ID | WBS | Task | Type | Duration | Start | Finish | Predecessors | Total slack | Resources | Work | Cost |
| --- | --- | --- | --- | --- | --- | --- | --- | --- | --- | --- | --- |
| 77 | 1.2.6 | **MAMPOSTERÍA** |  | 2.5d | 2014-11-08 | 2014-11-11 |  | 0d |  | 37.28h | 426.69 |
| 78 | 1.2.6.1 | Mampostería de bloque (40x20x15cm) canaleado |  | 2.5d | 2014-11-08 | 2014-11-11 | 80 | 0d | Peón [70%]; Maestro mayor en ejecución de obras civiles [10%]; Herramientas varias [70%]; Albañil [60%]; Agua [180 lt]; Arena puesta en obra [0.83 m3]; Cemento Portland Tipo I [7.2 saco 50 kg]; Bloque pomez de 40 × 20 × 15 cm [468 u] | 37.28h | 426.69 |
| 79 | 1.2.7 | **CUBIERTA** |  | 1.75d | 2014-11-06 | 2014-11-08 |  | 0d |  | 39.1h | 308.23 |
| 80 | 1.2.7.1 | Cubierta metálica prepintada, e=4mm con aislamiento poliuretano e=5mm (incluye cumbrero) |  | 0.75d | 2014-11-07 | 2014-11-08 | 81 | 0d | Peón [110%]; Maestro mayor en ejecución de obras civiles [20%]; Herramientas varias [110%]; Fierrero [110%]; Varios [1.9 Global]; Cubierta de galvalume prepintado e=0.40mm [19.76 m2]; Caballete para galvalume e=3mm [0.95 u]; Aislamiento poliuretano e=5mm [19.76 m2] | 18.3h | 206.58 |
| 81 | 1.2.7.2 | Kit correas G80x40x15x1.5 con pintura anticorrosiva |  | 1d | 2014-11-06 | 2014-11-07 | 75 | 0d | Maestro mayor en ejecución de obras civiles [10%]; Herramientas varias [50%]; Fierrero [50%]; Pintura anticorrosiva + diluyente [1.05 gl]; Compresor 2 HP [50%]; Técnico electromecánico de construcción [50%]; Soldadora [50%]; Suelda [4.2 kg]; Correa G80x40x15x1.5 [23.1 m.] | 20.8h | 101.65 |
| 82 | 1.2.8 | **INSTALACIONES ELÉCTRICAS** |  | 0.5d | 2014-11-12 | 2014-11-12 |  | 0d |  | 12.8h | 50.31 |
| 83 | 1.2.8.1 | Puntos de iluminación |  | 0.25d | 2014-11-12 | 2014-11-12 | 78 | 0d | Peón; Herramientas varias; Electricista; Unión EMT de 1/2" [2 u]; Alambre galvanizado #18 [0.05 kg]; Maestro electrico/liniero/subestación [20%]; Alambre sólido THHN 12 AWG [10 u]; Tubería galv. Em 1/2"x3m [1 u]; Caja rectangular profunda nacional [1 u]; Caja octogonal grande nacional [1 u]; Plafón losa [1 u] | 6.4h | 28.14 |
| 84 | 1.2.8.2 | Puntos de tomacorrientes |  | 0.25d | 2014-11-12 | 2014-11-12 | 83 | 0d | Peón; Maestro mayor en ejecución de obras civiles [20%]; Herramienta manual; Electricista; Tomacorrientes dobles [1 u]; Manguera Electrica [3.5 ml]; Cable Electrico #12 [8 ml]; Cajetin Rectangular [1 u]; Taipes [0.1 u] | 6.4h | 22.18 |
| 85 | 1.2.9 | **PISOS** |  | 1d | 2014-11-05 | 2014-11-05 |  | 0d |  | 23.27h | 167.5 |
| 86 | 1.2.9.1 | Replantillo de piedra e = 15 cm |  | 0.75d | 2014-11-05 | 2014-11-05 | 69 | 0d | Peón; Maestro mayor en ejecución de obras civiles [20%]; Herramientas varias; Albañil; Piedra puesta en obra [2.24 m3]; Grava puesta en obra [0.28 m3] | 19.2h | 79.46 |
| 87 | 1.2.9.2 | Fundición de contrapiso e=5cm fc=180 kg/cm2 |  | 0.25d | 2014-11-05 | 2014-11-05 | 86 | 0d | Peón [460%]; Maestro mayor en ejecución de obras civiles [50%]; Herramientas varias [490%]; Albañil [30%]; Agua [180 lt]; Concretera un saco [90%]; Arena puesta en obra [0.6 m3]; Grava puesta en obra [1 m3]; Cemento Portland Tipo I [6.9 saco 50 kg]; Vibrador [10%]; Cuartones de encofrado [2 u] | 4.07h | 88.05 |
| 88 | 1.2.10 | **CERÁMICA** |  | 1d | 2014-11-12 | 2014-11-13 |  | 0d |  | 17.6h | 185.78 |
| 89 | 1.2.10.1 | Suministro e instalación de cerámica piso |  | 1d | 2014-11-12 | 2014-11-13 | 84 | 0d | Maestro mayor en ejecución de obras civiles [20%]; Herramientas varias; Albañil; Emporado para pisos y paredes [2.8 Kg]; Bondex plus [49 Kg]; Cerámico nacional de 30x30 [14.7 m2] | 17.6h | 185.78 |
| 90 | 1.2.11 | **ENLUCIDO** |  | 0d | 2014-11-13 | 2014-11-13 |  | 0d |  |  |  |
| 91 | 1.2.11.1 | Enlucido int. ext | milestone | 0d | 2014-11-13 | 2014-11-13 | 89 | 0d | Peón [-0%]; Maestro mayor en ejecución de obras civiles [-0%]; Herramientas varias [-0%]; Albañil [-0%]; Agua; Arena puesta en obra; Cemento Portland Tipo I |  |  |
| 92 | 1.3 | **PRESUPUESTO PARA EL MEJORAMIENTO DE LA VIVIENDA DE LA SRA. MARÍA VELECELA NAULA** |  | 12.75d | 2014-11-13 | 2014-11-28 |  | 0d |  | 239.22h | 1,701.79 |
| 93 | 1.3.1 | **INSTALACIONES ELÉCTRICAS** |  | 0.75d | 2014-11-13 | 2014-11-14 |  | 0d |  | 19.2h | 112.54 |
| 94 | 1.3.1.1 | Puntos de iluminación |  | 0.75d | 2014-11-13 | 2014-11-14 | 91 | 0d | Peón; Herramientas varias; Electricista; Unión EMT de 1/2" [10 u]; Alambre galvanizado #18 [0.25 kg]; Maestro electrico/liniero/subestación [20%]; Alambre sólido THHN 12 AWG [50 u]; Tubería galv. Em 1/2"x3m [5 u]; Caja rectangular profunda nacional [5 u]; Caja octogonal grande nacional [5 u]; Plafón losa [5 u] | 19.2h | 112.54 |
| 95 | 1.3.2 | **CERÁMICA** |  | 3.75d | 2014-11-24 | 2014-11-28 |  | 0d |  | 66h | 757.01 |
| 96 | 1.3.2.1 | Suministro e instalación de cerámica piso |  | 3.75d | 2014-11-24 | 2014-11-28 | 98 | 0d | Maestro mayor en ejecución de obras civiles [20%]; Herramientas varias; Albañil; Emporado para pisos y paredes [11.6 Kg]; Bondex plus [203 Kg]; Cerámico nacional de 30x30 [60.9 m2] | 66h | 757.01 |
| 97 | 1.3.3 | **ENLUCIDO** |  | 8.25d | 2014-11-14 | 2014-11-24 |  | 0d |  | 147.62h | 665.16 |
| 98 | 1.3.3.1 | Enlucido int. ext |  | 8.25d | 2014-11-14 | 2014-11-24 | 94 | 0d | Peón [70%]; Maestro mayor en ejecución de obras civiles [10%]; Herramientas varias [80%]; Albañil [70%]; Agua [967.5 lt]; Arena puesta en obra [4.45 m3]; Cemento Portland Tipo I [38.7 saco 50 kg] | 147.62h | 665.16 |
| 99 | 1.3.4 | **PUERTA DE MADERA** |  | 0.25d | 2014-11-24 | 2014-11-24 |  | 3.5d |  | 6.4h | 167.07 |
| 100 | 1.3.4.1 | Puertas de madera de 0.90x2.10 incluye marco |  | 0.25d | 2014-11-24 | 2014-11-24 | 98 | 3.5d | Peón; Maestro mayor en ejecución de obras civiles [20%]; Herramienta manual; Carpintero; Puerta de madera de 0.90x2.10 incluye marco cerradura y accesorios de instalación [3 u] | 6.4h | 167.07 |
